# תוכנית עבודה - גאנט

How a schedule from MS Project changed from version to version. A marks actual dates.

## Version 1 (saved 2009-09-06)

Note of the change: initial import

| ID | WBS | Task | Duration | Start | Finish | Predecessors | Complete | Total float | Constraint |
| --- | --- | --- | --- | --- | --- | --- | --- | --- | --- |
| 1 | 1 | **סוכן רשת אוטומטי** | 272.97d? | 2009-05-04 A | 2010-04-25 |  | 33% | 0d |  |
| 2 | 1.1 | **כתיבת הצעת פרוייקט** | 16.97d? | 2009-05-04 A | 2009-05-26 A |  | 100% |  |  |
| 3 |  | הגדרת מטרות ויעדים | 2h? | 2009-05-04 A | 2009-05-04 A |  | 100% |  |  |
| 4 |  | סקירה ספרותית | 1d? | 2009-05-04 A | 2009-05-05 A | 3 | 100% |  |  |
| 5 |  | סקירת מצב קיים | 1d? | 2009-05-05 A | 2009-05-06 A | 4 | 100% |  |  |
| 6 | 1.1.4 | **כתיבת מסך דרישות ראשוני ותיחום של המערכת** | 7.36d? | 2009-05-06 A | 2009-05-15 A |  | 100% |  |  |
| 7 |  | גורמי הפרוייקט | 0.5d | 2009-05-06 A | 2009-05-06 A | 5 | 100% |  |  |
| 8 |  | אילוצי הפרוייקט | 0.5d | 2009-05-06 A | 2009-05-07 A | 7 | 100% |  |  |
| 9 |  | דרישות פונקציונאליות | 1d? | 2009-05-07 A | 2009-05-08 A | 8 | 100% |  |  |
| 10 |  | דרישות לא פונקציונאליות | 1d? | 2009-05-08 A | 2009-05-11 A | 9 | 100% |  |  |
| 11 |  | נושאי הפרוייקט | 0.5d | 2009-05-11 A | 2009-05-11 A | 10 | 100% |  |  |
| 12 |  | העברת המערכת לידי הלקוח | 0.5d | 2009-05-11 A | 2009-05-12 A | 11 | 100% |  |  |
| 13 |  | הערכת סיכונים | 0.5d | 2009-05-12 A | 2009-05-12 A | 12 | 100% |  |  |
| 14 |  | הערכת עלויות | 0.5d | 2009-05-12 A | 2009-05-13 A | 13 | 100% |  |  |
| 15 |  | תוכנית תיעוד | 0.5d | 2009-05-13 A | 2009-05-13 A | 14 | 100% |  |  |
| 16 |  | תוכנית דרישות לדור הבא | 0.5d | 2009-05-13 A | 2009-05-14 A | 15 | 100% |  |  |
| 17 |  | חשיבה על רעיונות לפתרון | 1d? | 2009-05-14 A | 2009-05-15 A | 16 | 100% |  |  |
| 18 |  | ניתוח פונקציונאלי ראשוני | 1d? | 2009-05-15 A | 2009-05-18 A | 17 | 100% |  |  |
| 19 |  | ניתוח חלופוןת מערכתי ראשוני | 1d? | 2009-05-18 A | 2009-05-19 A | 18 | 100% |  |  |
| 20 |  | תאור דרך הביצוע המתוכנן | 1d? | 2009-05-19 A | 2009-05-20 A | 19 | 100% |  |  |
| 21 |  | הערכת הכלים/האמצעים הנדרשים | 0.5d | 2009-05-20 A | 2009-05-20 A | 20 | 100% |  |  |
| 22 | 1.1.9 | **הערכת והשלמת פערי ידע** | 2.5d? | 2009-05-20 A | 2009-05-22 A |  | 100% |  |  |
| 23 |  | לימוד mshtml.dll | 1d? | 2009-05-20 A | 2009-05-21 A | 21 | 100% |  |  |
| 24 |  | התממשקות לדפדפן | 1d? | 2009-05-21 A | 2009-05-22 A | 23 | 100% |  |  |
| 25 |  | תכנית בדיקות ראשונית | 1d? | 2009-05-22 A | 2009-05-25 A | 24 | 100% |  |  |
| 26 |  | WBS | 1d? | 2009-05-25 A | 2009-05-26 A | 25 | 100% |  |  |
| 27 |  | הגשת ההצעה | 0d | 2009-05-26 A | 2009-05-26 A | 26 | 100% |  | finish no later than 2009-05-27 |
| 28 | 1.2 | **דו"ח ביניים 1** | 74d | 2009-05-26 A | 2009-08-30 A |  | 100% |  |  |
| 29 |  | מחקר על סוכנים אוטומטיים | 4d | 2009-05-26 A | 2009-05-31 A | 27 | 100% |  |  |
| 30 |  | כתיבת מסמך SRD | 35d | 2009-05-31 A | 2009-07-15 A | 29 | 100% |  |  |
| 31 |  | עדכון דרישות בהתאם למחקר שנעשה עד כה | 35d | 2009-07-15 A | 2009-08-30 A | 30 | 100% |  |  |
| 32 | 1.3 | **דו"ח ביניים 2** | 84d | 2009-08-30 | 2009-12-17 | 31 |  | 0d |  |
| 33 |  | תיקון דרישות פונקציונליות | 3d | 2009-08-30 | 2009-09-03 |  |  | 0d |  |
| 34 |  | חלוקת הפרוייקט למודולים ניתנים לתכנות | 3d | 2009-09-03 | 2009-09-07 | 33 |  | 0d |  |
| 35 |  | פיתוח קוד אבטיפוס | 38d | 2009-09-07 | 2009-10-26 | 34 |  | 0d |  |
| 36 |  | דיבוג ובדיקות פיתוח אבטיפוס | 37d | 2009-10-26 | 2009-12-14 | 35 |  | 0d |  |
| 37 |  | עדכון לוחות זמנים ודרישות | 3d | 2009-12-14 | 2009-12-17 | 36 |  | 0d |  |
| 38 | 1.4 | **דו"ח סופי** | 98d | 2009-12-17 | 2010-04-25 | 32 |  | 0d |  |
| 39 |  | פיתוח קוד | 31d | 2009-12-17 | 2010-01-27 | 37 |  | 0d | start no earlier than 2008-12-16 |
| 40 |  | דיבוג ובדיקות פיתוח | 33d | 2010-01-27 | 2010-03-11 | 39 |  | 0d |  |
| 41 |  | ניתוח ביצועי המערכת | 16d | 2010-03-11 | 2010-04-01 | 40 |  | 0d |  |
| 42 |  | כתיבת ספר פרוייקט | 18d | 2010-04-01 | 2010-04-25 | 41 |  | 0d |  |

## Version 2 (saved 2010-01-28)

Note of the change: more docs...

Last finish 2010-04-25 → 2010-07-15 (+81d). Complete tasks 26 → 31.

Changed:

| ID | Task | Start | Finish | Duration | Complete | Total float | Other |
| --- | --- | --- | --- | --- | --- | --- | --- |
| 1 | **סוכן רשת אוטומטי** |  | 2010-04-25 → 2010-07-15 (+81d) | 272.97d? → 335.98d? | 33% → 72% |  |  |
| 32 | **דו"ח ביניים 2** | 2009-08-30 A | 2009-12-17 → 2010-03-10 A (+83d) | 84d → 147.02d | 0% → 100% | 0d → none |  |
| 33 | תיקון דרישות פונקציונליות | 2009-08-30 A | 2009-09-03 A |  | 0% → 100% | 0d → none |  |
| 34 | חלוקת הפרוייקט למודולים ניתנים לתכנות | 2009-09-03 A | 2009-09-07 A |  | 0% → 100% | 0d → none |  |
| 35 | פיתוח קוד אבטיפוס | 2009-09-07 A | 2009-10-26 A |  | 0% → 100% | 0d → none |  |
| 36 | דיבוג ובדיקות פיתוח אבטיפוס | 2009-10-26 A | 2009-12-14 → 2010-01-28 A (+45d) | 37d → 71.51d | 0% → 100% | 0d → none | constraint none → finish no earlier than 2010-01-27 |
| 37 | עדכון לוחות זמנים ודרישות | 2009-12-14 A | 2009-12-17 → 2010-03-10 A (+83d) | 3d → 34.51d | 0% → 100% | 0d → none | constraint none → finish no earlier than 2010-01-27 |
| 38 | **דו"ח סופי** | 2009-12-17 → 2010-03-10 A (+83d) | 2010-04-25 → 2010-07-15 (+81d) |  | 0% → 3% |  |  |
| 39 | פיתוח קוד | 2009-12-17 → 2010-03-10 A (+83d) | 2010-01-27 → 2010-04-19 (+82d) |  | 0% → 11% |  |  |
| 40 | דיבוג ובדיקות פיתוח | 2010-01-27 → 2010-04-19 (+82d) | 2010-03-11 → 2010-06-01 (+82d) |  |  |  |  |
| 41 | ניתוח ביצועי המערכת | 2010-03-11 → 2010-06-01 (+82d) | 2010-04-01 → 2010-06-22 (+82d) |  |  |  |  |
| 42 | כתיבת ספר פרוייקט | 2010-04-01 → 2010-06-22 (+82d) | 2010-04-25 → 2010-07-15 (+81d) |  |  |  |  |

## Version 3 (saved 2010-05-24)

Note of the change: this commit include docs and application changes

Last finish 2010-07-15 → 2010-07-02 (-13d).

Changed:

| ID | Task | Start | Finish | Duration | Complete | Total float | Predecessors | Other |
| --- | --- | --- | --- | --- | --- | --- | --- | --- |
| 1 | **סוכן רשת אוטומטי** |  | 2010-07-15 → 2010-07-02 (-13d) | 335.98d? → 326.27d? | 72% → 87% |  |  |  |
| 38 | **דו"ח סופי** |  | 2010-07-15 → 2010-07-02 (-13d) | 98d → 88.29d | 3% → 65% |  |  |  |
| 39 | פיתוח קוד |  |  |  | 11% → 80% | 0d → 24.77d |  |  |
| 40 | דיבוג ובדיקות פיתוח | 2010-04-19 A | 2010-06-01 → 2010-06-11 (+10d) | 33d → 41.29d | 0% → 60% |  |  |  |
| 41 | ניתוח ביצועי המערכת | 2010-06-01 → 2010-06-13 (+12d) | 2010-06-22 → 2010-07-02 (+10d) |  |  |  |  |  |
| 42 | כתיבת ספר פרוייקט | 2010-06-22 → 2010-03-28 A (-86d) | 2010-07-15 → 2010-05-31 (-45d) | 18d → 49.83d | 0% → 80% |  | 41 → 37 | constraint none → finish no earlier than 2010-05-31 |
